# Diplomarbeit

Schedule from Planner, 2018-12-10 to 2019-04-28.

## Calendars

- Default: Mon-Fri 19:00-21:00; Sat off; Sun 10:00-12:00, 13:00-17:00. Exceptions (off unless hours are given): 2018-12-10 to 2018-12-13 19:00-21:00, 2018-12-14, 2018-12-20, 2018-12-22 10:00-12:00, 13:00-17:00, 2018-12-24 19:00-21:00, 2018-12-25 10:00-12:00, 13:00-17:00, 2018-12-26 19:00-21:00, 2018-12-27 to 2018-12-30 10:00-12:00, 13:00-17:00, 2018-12-31 19:00-21:00, 2019-01-01, 2019-01-02 to 2019-01-05 10:00-12:00, 13:00-17:00, 2019-01-14 10:00-12:00, 13:00-17:00, 2019-01-19 10:00-12:00, 13:00-17:00, 2019-01-21 10:00-12:00, 13:00-17:00, 2019-01-26 10:00-12:00, 13:00-17:00, 2019-01-28 10:00-12:00, 13:00-17:00, 2019-02-02 10:00-12:00, 13:00-17:00, 2019-02-04 10:00-12:00, 13:00-17:00, 2019-02-09 10:00-12:00, 13:00-17:00, 2019-02-11 10:00-12:00, 13:00-17:00, 2019-02-18 10:00-12:00, 13:00-17:00, 2019-02-25 10:00-12:00, 13:00-17:00, 2019-03-02 10:00-12:00, 13:00-17:00, 2019-03-04 10:00-12:00, 13:00-17:00, 2019-03-11 10:00-12:00, 13:00-17:00, 2019-03-16 10:00-12:00, 13:00-17:00, 2019-04-27 10:00-12:00, 13:00-17:00.

## Resources

| Resource | Rate |
| --- | --- |
| Andreas Zweili | 60 |

## Schedule

| ID | WBS | Task | Type | Duration | Start | Finish | Predecessors | Constraint | Resources | Work |
| --- | --- | --- | --- | --- | --- | --- | --- | --- | --- | --- |
| 1 | 1 | Start Diplomarbeit | milestone | 0d | 2018-12-10 | 2018-12-10 |  | must start on 2018-12-10 | Andreas Zweili |  |
| 2 | 2 | **Initialisierung** |  |  | 2018-12-10 | 2018-12-21 |  |  |  | 22h |
| 3 | 2.1 | Ziele dokumentieren |  |  | 2018-12-10 | 2018-12-12 |  | must start on 2018-12-10 | Andreas Zweili | 5h |
| 4 | 2.2 | Abgrenzung definieren |  |  | 2018-12-12 | 2018-12-13 | 3 |  | Andreas Zweili | 2h |
| 5 | 2.3 | Konfigurationsmanagement beschreiben |  |  | 2018-12-13 | 2018-12-16 | 4 |  | Andreas Zweili | 2h |
| 6 | 2.4 | Projektmethode beschreiben |  |  | 2018-12-16 | 2018-12-16 | 5 |  | Andreas Zweili | 2h |
| 7 | 2.5 | Zeitplan erarbeiten |  |  | 2018-12-16 | 2018-12-17 | 6 |  | Andreas Zweili | 5h |
| 8 | 2.6 | **Controlling** |  |  | 2018-12-18 | 2018-12-21 |  |  |  | 6h |
| 9 | 2.6.1 | Zeitmanagement |  |  | 2018-12-18 | 2018-12-18 | 7 |  | Andreas Zweili | 2h |
| 10 | 2.6.2 | Ressourcen |  |  | 2018-12-19 | 2018-12-19 | 9 |  | Andreas Zweili | 2h |
| 11 | 2.6.3 | Kosten |  |  | 2018-12-21 | 2018-12-21 | 10 |  | Andreas Zweili | 2h |
| 12 | 2.7 | Initialisierung abgeschlossen | milestone | 0d | 2018-12-21 | 2018-12-21 | 11 |  |  |  |
| 13 | 3 | **Analyse** |  |  | 2018-12-22 | 2019-01-02 |  |  |  | 47h |
| 14 | 3.1 | Ist-Analyse erstellen |  |  | 2018-12-22 | 2018-12-22 | 12 |  | Andreas Zweili | 2h |
| 15 | 3.2 | Soll-Analyse erstellen |  |  | 2018-12-22 | 2018-12-22 | 14 |  | Andreas Zweili | 2h |
| 16 | 3.3 | SWOT Analyse erstellen |  |  | 2018-12-22 | 2018-12-23 | 15 |  | Andreas Zweili | 4h |
| 17 | 3.4 | Stakeholder Diagramm erstellen |  |  | 2018-12-23 | 2018-12-23 | 16 |  | Andreas Zweili | 2h |
| 18 | 3.5 | **Risikoanalyse erstellen** |  |  | 2018-12-25 | 2018-12-27 |  |  |  | 10h |
| 19 | 3.5.1 | Risiken erfassen |  |  | 2018-12-25 | 2018-12-25 | 70 |  | Andreas Zweili | 4h |
| 20 | 3.5.2 | Risiken bewerten |  |  | 2018-12-25 | 2018-12-26 | 19 |  | Andreas Zweili | 2h |
| 21 | 3.5.3 | Massnahmen Katalog erarbeiten |  |  | 2018-12-26 | 2018-12-27 | 20 |  | Andreas Zweili | 4h |
| 22 | 3.6 | User Stories erarbeiten |  |  | 2018-12-27 | 2018-12-28 | 21 |  | Andreas Zweili | 5h |
| 23 | 3.7 | **Use Cases erarbeiten** |  |  | 2018-12-28 | 2018-12-30 |  |  |  | 12h |
| 24 | 3.7.1 | Use Case Diagramm erstellen |  |  | 2018-12-28 | 2018-12-28 | 22 |  | Andreas Zweili | 4h |
| 25 | 3.7.2 | Use Cases ausarbeiten |  |  | 2018-12-29 | 2018-12-30 | 24 |  | Andreas Zweili | 8h |
| 26 | 3.8 | Anforderungskatalog erstellen |  |  | 2018-12-30 | 2018-12-30 | 25 |  | Andreas Zweili | 2h |
| 27 | 3.9 | UML |  |  | 2018-12-30 | 2019-01-02 | 26 |  | Andreas Zweili | 8h |
| 28 | 3.10 | Analyse abgeschlossen | milestone | 0d | 2019-01-02 | 2019-01-02 | 27 |  |  |  |

| ID | WBS | Task | Type | Duration | Start | Finish | Predecessors | Constraint | Resources | Work |
| --- | --- | --- | --- | --- | --- | --- | --- | --- | --- | --- |
| 29 | 4 | **Konzept** |  |  | 2019-01-02 | 2019-01-10 |  |  |  | 34h |
| 30 | 4.1 | **Lösungsvariante erarbeiten** |  | 2.12d | 2019-01-02 | 2019-01-05 |  | start no earlier than 2018-12-10 |  | 17h |
| 31 | 4.1.1 | Lösungsvarianten erfassen |  |  | 2019-01-02 | 2019-01-03 | 28 |  | Andreas Zweili | 5h |
| 32 | 4.1.2 | Lösungsvarianten bewerten |  |  | 2019-01-03 | 2019-01-04 | 31 |  | Andreas Zweili | 8h |
| 33 | 4.1.3 | Lösungsvariante bestimmen |  |  | 2019-01-04 | 2019-01-05 | 32 |  | Andreas Zweili | 4h |
| 34 | 4.2 | **Testing** |  | 2.12d | 2019-01-05 | 2019-01-10 |  |  |  | 17h |
| 35 | 4.2.1 | Testkonzept beschreiben |  |  | 2019-01-05 | 2019-01-06 | 33 |  | Andreas Zweili | 5h |
| 36 | 4.2.2 | Testfälle erstellen |  |  | 2019-01-06 | 2019-01-10 | 35 |  | Andreas Zweili | 12h |
| 37 | 4.3 | Konzeptionierung abgeschlossen | milestone | 0d | 2019-01-10 | 2019-01-10 | 36 |  |  |  |
| 38 | 5 | **Realisierung** |  |  | 2019-01-11 | 2019-03-02 |  |  |  | 172h |
| 39 | 5.1 | Github Repository erstellen |  |  | 2019-01-11 | 2019-01-11 | 37 |  | Andreas Zweili | 2h |
| 40 | 5.2 | **UI** |  |  | 2019-01-13 | 2019-01-20 |  |  |  | 30h |
| 41 | 5.2.1 | UI ausarbeiten |  |  | 2019-01-13 | 2019-01-14 | 39 |  | Andreas Zweili | 8h |
| 42 | 5.2.2 | UI Test ausarbeiten |  |  | 2019-01-14 | 2019-01-16 | 41 |  | Andreas Zweili | 8h |
| 43 | 5.2.3 | UI von Usern testen lassen |  |  | 2019-01-17 | 2019-01-19 | 42 |  | Andreas Zweili | 5h |
| 44 | 5.2.4 | UI Test Resultate auswerten |  |  | 2019-01-19 | 2019-01-19 | 43 |  | Andreas Zweili | 4h |
| 45 | 5.2.5 | UI anpassen |  |  | 2019-01-19 | 2019-01-20 | 44 |  | Andreas Zweili | 5h |
| 46 | 5.3 | **Coding** |  |  | 2019-01-20 | 2019-02-24 |  |  |  | 120h |
| 47 | 5.3.1 | Backend Read Config Funktion |  |  | 2019-01-20 | 2019-01-21 | 45 |  | Andreas Zweili | 8h |
| 48 | 5.3.2 | Frontend Read Config Funktion |  |  | 2019-01-22 | 2019-01-25 | 47 |  | Andreas Zweili | 8h |
| 49 | 5.3.3 | Backend Write Config Funktion |  |  | 2019-01-26 | 2019-01-27 | 48 |  | Andreas Zweili | 8h |
| 50 | 5.3.4 | Frontend Write Config Funktion |  |  | 2019-01-27 | 2019-01-28 | 49 |  | Andreas Zweili | 8h |
| 51 | 5.3.5 | Backend Backup Funktion |  |  | 2019-01-28 | 2019-01-31 | 50 |  | Andreas Zweili | 8h |
| 52 | 5.3.6 | Frontend Backup Funktion |  |  | 2019-02-01 | 2019-02-02 | 51 |  | Andreas Zweili | 8h |
| 53 | 5.3.7 | Backend Restore Funktion |  |  | 2019-02-03 | 2019-02-04 | 52 |  | Andreas Zweili | 8h |
| 54 | 5.3.8 | Frontend Restore Funktion |  |  | 2019-02-04 | 2019-02-06 | 53 |  | Andreas Zweili | 8h |
| 55 | 5.3.9 | Backend Mounting Funktion |  |  | 2019-02-07 | 2019-02-09 | 54 |  | Andreas Zweili | 8h |
| 56 | 5.3.10 | Frontend Mounting Funktion |  |  | 2019-02-09 | 2019-02-10 | 55 |  | Andreas Zweili | 8h |
| 57 | 5.3.11 | Backend Delete Funktion |  |  | 2019-02-11 | 2019-02-12 | 56 |  | Andreas Zweili | 8h |
| 58 | 5.3.12 | Frontend Delete Funktion |  |  | 2019-02-13 | 2019-02-17 | 57 |  | Andreas Zweili | 8h |
| 59 | 5.3.13 | Coding Filler |  |  | 2019-02-17 | 2019-02-24 | 58 |  | Andreas Zweili | 24h |
| 60 | 5.4 | Testfälle anwenden |  |  | 2019-02-25 | 2019-03-02 | 59 |  | Andreas Zweili | 20h |
| 61 | 5.5 | Realisierung abgeschlossen | milestone | 0d | 2019-03-02 | 2019-03-02 | 60 |  |  |  |

| ID | WBS | Task | Type | Duration | Start | Finish | Predecessors | Constraint | Resources | Work |
| --- | --- | --- | --- | --- | --- | --- | --- | --- | --- | --- |
| 62 | 6 | **Ausblick** |  |  | 2019-03-03 | 2019-03-04 |  |  |  | 8h |
| 63 | 6.1 | Gelerntes erfassen |  |  | 2019-03-03 | 2019-03-03 | 61 |  | Andreas Zweili | 4h |
| 64 | 6.2 | Allgemeines Fazit |  |  | 2019-03-03 | 2019-03-03 | 63 |  | Andreas Zweili | 2h |
| 65 | 6.3 | Risiken Anhand der Arbeit bewerten |  |  | 2019-03-04 | 2019-03-04 | 64 |  | Andreas Zweili | 2h |
| 66 | 6.4 | Ausblick abgeschlossen | milestone | 0d | 2019-03-04 | 2019-03-04 | 65 |  |  |  |
| 67 | 7 | Arbeit korrigieren |  |  | 2019-03-04 | 2019-03-10 |  | start no earlier than 2019-03-04 | Andreas Zweili | 20h |
| 68 | 8 | **Meeting #1** |  | 1.12d | 2018-12-23 | 2018-12-25 |  | must start on 2018-12-23 |  | 5h |
| 69 | 8.1 | Meeting abhalten |  |  | 2018-12-23 | 2018-12-23 |  | must start on 2018-12-23 | Andreas Zweili | 2h |
| 70 | 8.2 | Nacharbeiten |  |  | 2018-12-24 | 2018-12-25 |  | must start on 2018-12-24 | Andreas Zweili | 3h |
| 71 | 9 | **Meeting #2** |  | 1.12d | 2019-01-26 | 2019-01-27 |  | must start on 2019-01-26 |  | 5h |
| 72 | 9.1 | Meeting abhalten |  |  | 2019-01-26 | 2019-01-26 |  | must start on 2019-01-26 | Andreas Zweili | 2h |
| 73 | 9.2 | Nacharbeiten |  |  | 2019-01-27 | 2019-01-27 |  | must start on 2019-01-27 | Andreas Zweili | 3h |
| 74 | 10 | **Meeting #3** |  | 0.62d | 2019-02-28 | 2019-03-02 |  | must start on 2019-02-28 |  | 5h |
| 75 | 10.1 | Meeting abhalten |  |  | 2019-02-28 | 2019-02-28 |  | must start on 2019-02-28 | Andreas Zweili | 2h |
| 76 | 10.2 | Nacharbeiten |  |  | 2019-03-01 | 2019-03-02 |  | must start on 2019-03-01 | Andreas Zweili | 3h |
| 77 | 11 | Diplomarbeit abgeben | milestone | 0d | 2019-03-18 | 2019-03-18 |  | must start on 2019-03-18 | Andreas Zweili [0%] |  |
| 78 | 12 | Präsentation | milestone | 0d | 2019-04-02 | 2019-04-02 | 77 | start no earlier than 2019-04-02 | Andreas Zweili |  |
| 79 | 13 | **Ausstellung** |  |  | 2019-03-31 | 2019-04-28 |  | must start on 2019-04-27 |  | 24h |
| 80 | 13.1 | Ausstellung vorbereiten |  | 9d | 2019-03-31 | 2019-04-28 |  | start no earlier than 2019-03-31 | Andreas Zweili [33%] | 24h |
| 81 | 13.2 | Arbeit ausstellen | milestone | 0d | 2019-04-27 | 2019-04-27 |  | must start on 2019-04-27 | Andreas Zweili |  |
